# TUBULAR

Schedule from GanttProject, 2018-01-08 to 2019-01-18.
Alternative to AirCore for Atmospheric Greenhouse Gas Sampling

## Calendars

- Project calendar: Mon-Sun working.

## Schedule

| ID | WBS | Task | Type | Duration | Start | Finish |
| --- | --- | --- | --- | --- | --- | --- |
| 1 | 1 | **Stages** |  | 357d | 2018-01-08 | 2018-12-30 |
| 2 | 1.1 | Preliminary Design |  | 35d | 2018-01-08 | 2018-02-11 |
| 3 | 1.2 | Critical Design |  | 112d | 2018-02-12 | 2018-06-03 |
| 4 | 1.3 | Experiment Building and Testing |  | 105d | 2018-06-06 | 2018-09-18 |
| 5 | 1.4 | Integration Progress Reviews |  | 5d | 2018-07-24 | 2018-07-28 |
| 6 | 1.5 | Final Experiment Preparations |  | 25d | 2018-09-17 | 2018-10-11 |
| 7 | 1.6 | Launch Campaign |  | 11d | 2018-10-12 | 2018-10-22 |
| 8 | 1.7 | Data Analysis and Reporting |  | 69d | 2018-10-23 | 2018-12-30 |
| 9 | 2 | **Student Experiment Documentation** |  | 367d | 2018-01-15 | 2019-01-16 |
| 10 | 2.1 | SEDv1-0 | milestone | 0d | 2018-01-15 | 2018-01-15 |
| 11 | 2.2 | SEDv1-2 | milestone | 0d | 2018-03-12 | 2018-03-12 |
| 12 | 2.3 | SEDv2-0 | milestone | 0d | 2018-05-14 | 2018-05-14 |
| 13 | 2.4 | SEDv3-0 | milestone | 0d | 2018-07-16 | 2018-07-16 |
| 14 | 2.5 | SEDv4-0 | milestone | 0d | 2018-09-17 | 2018-09-17 |
| 15 | 2.6 | SEDv5-0 |  | 66d | 2018-11-12 | 2019-01-16 |
| 16 | 3 | **Reviews** |  | 243d | 2018-02-05 | 2018-10-05 |
| 17 | 3.1 | Preliminary Design Review (PDR) |  | 5d | 2018-02-05 | 2018-02-09 |
| 18 | 3.2 | Critical Design Review (CDR) |  | 5d | 2018-05-21 | 2018-05-25 |
| 19 | 3.3 | Integration Progress Review (IPR) |  | 5d | 2018-07-23 | 2018-07-27 |
| 20 | 3.4 | Experiment Acceptance Review (EAR) |  | 5d | 2018-10-01 | 2018-10-05 |
| 21 | 4 | **Electrical Division** |  | 157d | 2018-01-25 | 2018-06-30 |
| 22 | 4.1 | Select pump |  | 2d | 2018-02-22 | 2018-02-23 |
| 23 | 4.2 | Find pump on Swedish vendor site | milestone | 0d | 2018-02-26 | 2018-02-26 |
| 24 | 4.3 | Order pump |  | 30d | 2018-02-26 | 2018-03-27 |
| 25 | 4.4 | Select valves, switching cuircit, ad interfaces |  | 5d | 2018-02-22 | 2018-02-26 |
| 26 | 4.5 | Find valves on Swedish vendor site | milestone | 0d | 2018-03-01 | 2018-03-01 |
| 27 | 4.6 | Order valves |  | 31d | 2018-03-02 | 2018-04-01 |
| 28 | 4.7 | Find all electrical sensors |  | 3d | 2018-03-05 | 2018-03-07 |
| 29 | 4.8 | Order sensors |  | 30d | 2018-02-08 | 2018-03-09 |
| 30 | 4.9 | Update initial/preliminary circtuit diagram |  | 2d | 2018-01-25 | 2018-01-26 |
| 31 | 4.10 | Define sensors |  | 2d | 2018-01-25 | 2018-01-26 |
| 32 | 4.11 | Create circuit diagram |  | 5d | 2018-02-27 | 2018-03-03 |
| 33 | 4.12 | Identify extra components |  | 2d | 2018-03-05 | 2018-03-06 |
| 34 | 4.13 | Define interfaces between EB, valve center, and CAC |  | 5d | 2018-02-28 | 2018-03-04 |
| 35 | 4.14 | Find extra components |  | 2d | 2018-03-07 | 2018-03-08 |
| 36 | 4.15 | Order extra components |  | 20d | 2018-03-20 | 2018-04-08 |
| 37 | 4.16 | Decide on number of PCBs |  | 9d | 2018-03-20 | 2018-03-28 |
| 38 | 4.17 | Design PCB |  | 10d | 2018-03-20 | 2018-03-29 |
| 39 | 4.18 | Power distribution circuit diagram |  | 5d | 2018-03-22 | 2018-03-26 |
| 40 | 4.19 | Figure out grounding |  | 10d | 2018-03-20 | 2018-03-29 |
| 41 | 4.20 | Confirm heating requirements, heater placement, number, size |  | 6d | 2018-03-12 | 2018-03-17 |
| 42 | 4.21 | Print PCB |  | 10d | 2018-05-15 | 2018-05-24 |
| 43 | 4.22 | Soldering PCB |  | 1d | 2018-06-01 | 2018-06-01 |
| 44 | 4.23 | Integration with Software |  | 15d | 2018-06-01 | 2018-06-15 |

| ID | WBS | Task | Type | Duration | Start | Finish |
| --- | --- | --- | --- | --- | --- | --- |
| 45 | 4.24 | **Testing** |  | 111d | 2018-03-12 | 2018-06-30 |
| 46 | 4.24.1 | Plan component testing |  | 2d | 2018-03-12 | 2018-03-13 |
| 47 | 4.24.2 | Test: Pump, sample size, flow rate, time of sampling |  | 2d | 2018-04-13 | 2018-04-14 |
| 48 | 4.24.3 | Test: Breadboard with Arduino, pump, and valves. |  | 2d | 2018-04-13 | 2018-04-14 |
| 49 | 4.24.4 | Test: Breadboard with arduino and sensors |  | 2d | 2018-04-13 | 2018-04-14 |
| 50 | 4.24.5 | Test: Check valves and connections |  | 2d | 2018-04-13 | 2018-04-14 |
| 51 | 4.24.6 | Test: Check pump and connections |  | 5d | 2018-04-16 | 2018-04-20 |
| 52 | 4.24.7 | Test: Check pump low pressure test with valves and bags |  | 5d | 2018-04-16 | 2018-04-20 |
| 53 | 4.24.8 | Test: Thermal with emphasis on pumps and valves |  | 5d | 2018-04-16 | 2018-04-20 |
| 54 | 4.24.9 | Test: PCB, AAC, and CAC integration. Valve center. |  | 10d | 2018-06-04 | 2018-06-13 |
| 55 | 4.24.10 | Test: Integration with electrical |  | 16d | 2018-06-15 | 2018-06-30 |
| 56 | 5 | **Software Division** |  | 205d | 2018-02-22 | 2018-09-14 |
| 57 | 5.1 | Acquire Arduino Due and ethernet shield |  | 15d | 2018-02-22 | 2018-03-08 |
| 58 | 5.2 | Design & record telecomand & telemetry package |  | 1d | 2018-02-27 | 2018-02-27 |
| 59 | 5.3 | Sequence diagram for telecommand | milestone | 0d | 2018-03-12 | 2018-03-12 |
| 60 | 5.4 | Sequence diagram for telemetry | milestone | 0d | 2018-03-12 | 2018-03-12 |
| 61 | 5.5 | Listing header file for sensors etc | milestone | 0d | 2018-02-26 | 2018-02-26 |
| 62 | 5.6 | Code sensors reading object |  | 2d | 2018-02-27 | 2018-02-28 |
| 63 | 5.7 | Code air sampling object |  | 5d | 2018-03-26 | 2018-03-30 |
| 64 | 5.8 | Code heating object |  | 13d | 2018-03-19 | 2018-03-31 |
| 65 | 5.9 | Apply watchdog and test it | milestone | 0d | 2018-04-01 | 2018-04-01 |
| 66 | 5.10 | Code rx/TX object |  | 14d | 2018-03-26 | 2018-04-08 |
| 67 | 5.11 | Make interface document (Pins) | milestone | 0d | 2018-04-29 | 2018-04-29 |
| 68 | 5.12 | Write ground section and code |  | 23d | 2018-04-01 | 2018-04-23 |
| 69 | 5.13 | Write GS manual |  | 8d | 2018-04-23 | 2018-04-30 |
| 70 | 5.14 | Integration with Electrical |  | 15d | 2018-06-01 | 2018-06-15 |
| 71 | 5.15 | Software freeze date | milestone | 0d | 2018-09-15 | 2018-09-15 |

| ID | WBS | Task | Type | Duration | Start | Finish |
| --- | --- | --- | --- | --- | --- | --- |
| 72 | 5.16 | **Testing** |  | 62d | 2018-04-30 | 2018-06-30 |
| 73 | 5.16.1 | Test: GS-OBC connection |  | 7d | 2018-04-30 | 2018-05-06 |
| 74 | 5.16.2 | Test: Verify data return correctly |  | 1d | 2018-06-08 | 2018-06-08 |
| 75 | 5.16.3 | Test: GS can reprogram the software |  | 7d | 2018-05-07 | 2018-05-13 |
| 76 | 5.16.4 | Test: Running software for 10 hours (no overflows) |  | 7d | 2018-05-14 | 2018-05-20 |
| 77 | 5.16.5 | Test: Invalid commands for GS-OBC |  | 8d | 2018-05-20 | 2018-05-27 |
| 78 | 5.16.6 | Test: Software integration testing |  | 7d | 2018-05-28 | 2018-06-03 |
| 79 | 5.16.7 | Test: Integration with software |  | 16d | 2018-06-15 | 2018-06-30 |
| 80 | 6 | **Mechanical Division** |  | 202d | 2018-02-26 | 2018-09-15 |
| 81 | 6.1 | Design the new configuration |  | 11d | 2018-02-26 | 2018-03-08 |
| 82 | 6.2 | Decide on locations of external connections |  | 11d | 2018-02-26 | 2018-03-08 |
| 83 | 6.3 | Agree on new designs with programme organizers |  | 11d | 2018-02-26 | 2018-03-08 |
| 84 | 6.4 | Design pipes |  | 5d | 2018-02-26 | 2018-03-02 |
| 85 | 6.5 | Find valves |  | 5d | 2018-02-26 | 2018-03-02 |
| 86 | 6.6 | Order valves |  | 15d | 2018-03-05 | 2018-03-19 |
| 87 | 6.7 | Label all figures in SED | milestone | 0d | 2018-02-26 | 2018-02-26 |
| 88 | 6.8 | Acquire styrofoam walls (payload protection) |  | 11d | 2018-05-11 | 2018-05-21 |
| 89 | 6.9 | Acquire aluminium sheet for the walls |  | 11d | 2018-05-11 | 2018-05-21 |
| 90 | 6.10 | Acquire polyethylene foam (thermal insulation) |  | 11d | 2018-05-11 | 2018-05-21 |
| 91 | 6.11 | Acquire experiment building components (e.g. screws) |  | 11d | 2018-05-11 | 2018-05-21 |
| 92 | 6.12 | Acquire frame bars REXROTH |  | 11d | 2018-05-11 | 2018-05-21 |
| 93 | 6.13 | Join the frame bars build structure |  | 21d | 2018-06-01 | 2018-06-21 |
| 94 | 6.14 | Build valve center (drill holes, attach valve, fix in the structure) |  | 21d | 2018-06-01 | 2018-06-21 |
| 95 | 6.15 | Attach the pipes |  | 5d | 2018-06-25 | 2018-06-29 |
| 96 | 6.16 | Build the walls (aluminium sheet, PE FOAM insulation sterofoam) |  | 5d | 2018-07-25 | 2018-07-29 |
| 97 | 6.17 | Make holes in the walls for the external connections |  | 5d | 2018-07-25 | 2018-07-29 |
| 98 | 6.18 | Attach the walls to the structure |  | 5d | 2018-07-25 | 2018-07-29 |

| ID | WBS | Task | Type | Duration | Start | Finish |
| --- | --- | --- | --- | --- | --- | --- |
| 99 | 6.19 | **Testing** |  | 46d | 2018-08-01 | 2018-09-15 |
| 100 | 6.19.1 | Test: vibration |  | 46d | 2018-08-01 | 2018-09-15 |
| 101 | 6.19.2 | Test: shock |  | 46d | 2018-08-01 | 2018-09-15 |
| 102 | 6.19.3 | Test: thermal |  | 46d | 2018-08-01 | 2018-09-15 |
| 103 | 6.19.4 | Test: styrofoam in vacuum |  | 46d | 2018-08-01 | 2018-09-15 |
| 104 | 6.19.5 | Test: mechanical interfaces |  | 46d | 2018-08-01 | 2018-09-15 |
| 105 | 7 | **Science Division** |  | 365d | 2018-01-16 | 2019-01-15 |
| 106 | 7.1 | Bags vs Canisters decision | milestone | 0d | 2018-02-23 | 2018-02-23 |
| 107 | 7.2 | Understand maths of sampling/test. Flow rate requirements |  | 3d | 2018-02-22 | 2018-02-24 |
| 108 | 7.3 | Similarity with LISA (the paper Lightweight Stratospheric Air Sample) | milestone | 0d | 2018-02-22 | 2018-02-22 |
| 109 | 7.4 | Calculate endothermal analysis (i.e. atmosphere and sun) | milestone | 0d | 2018-02-22 | 2018-02-22 |
| 110 | 7.5 | Obtain empirical model |  | 11d | 2018-03-02 | 2018-03-12 |
| 111 | 7.6 | MATLAB simulation of flight |  | 7d | 2018-03-12 | 2018-03-18 |
| 112 | 7.7 | Model/simulation of sampling |  | 22d | 2018-03-25 | 2018-04-15 |
| 113 | 7.8 | Determing sampling altitudes | milestone | 0d | 2018-05-01 | 2018-05-01 |
| 114 | 7.9 | Understand how chromatographer works |  | 7d | 2018-05-14 | 2018-05-20 |
| 115 | 7.10 | FMI site visit / AirCore tube retrieval |  | 7d | 2018-07-01 | 2018-07-07 |
| 116 | 7.11 | Find out how Piacaro analyser works |  | 4d | 2018-08-30 | 2018-09-02 |
| 117 | 7.12 | Post-flight analysis |  | 28d | 2018-10-22 | 2018-11-18 |
| 118 | 7.13 | Write research paper |  | 58d | 2018-11-19 | 2019-01-15 |
| 119 | 7.14 | Publish research paper |  | 16d | 2018-01-16 | 2018-01-31 |
| 120 | 7.15 | **Testing** |  | 37d | 2018-04-09 | 2018-05-15 |
| 121 | 7.15.1 | Test: planning / sampling methodology |  | 7d | 2018-04-09 | 2018-04-15 |
| 122 | 7.15.2 | Test: sampling |  | 7d | 2018-04-16 | 2018-04-22 |
| 123 | 7.15.3 | Analyse sampling test results |  | 16d | 2018-04-30 | 2018-05-15 |
| 124 | 7.15.4 | Test: bag condensation test |  | 7d | 2018-04-23 | 2018-04-29 |

| ID | WBS | Task | Type | Duration | Start | Finish |
| --- | --- | --- | --- | --- | --- | --- |
| 125 | 8 | **Thermal Diviion** |  | 189d | 2018-02-24 | 2018-08-31 |
| 126 | 8.1 | Calculate exothermal analysis |  | 3d | 2018-02-24 | 2018-02-26 |
| 127 | 8.2 | Update thermal design |  | 4d | 2018-03-01 | 2018-03-04 |
| 128 | 8.3 | Onboard new thermal team member |  | 11d | 2018-03-15 | 2018-03-25 |
| 129 | 8.4 | Planned long term thermal tasks | milestone | 0d | 2018-03-30 | 2018-03-30 |
| 130 | 8.5 | Finish calculate Solar Flux and Albedo Flux |  | 6d | 2018-04-06 | 2018-04-11 |
| 131 | 8.6 | Calculate the Earth IR Flux |  | 6d | 2018-04-06 | 2018-04-11 |
| 132 | 8.7 | Calculate Dissipated heat and Convection |  | 8d | 2018-04-12 | 2018-04-19 |
| 133 | 8.8 | Preparations for simulations |  | 8d | 2018-04-12 | 2018-04-19 |
| 134 | 8.9 | Simulate the heat and analyse simulations |  | 11d | 2018-04-20 | 2018-04-30 |
| 135 | 8.10 | Document results from calculations and simulations and define tests |  | 11d | 2018-04-20 | 2018-04-30 |
| 136 | 8.11 | Extra time for simulations and calculations if changes occure from electronics or mechanical |  | 5d | 2018-05-01 | 2018-05-05 |
| 137 | 8.12 | Document thermal analysis for CDR |  | 13d | 2018-05-01 | 2018-05-13 |
| 138 | 8.13 | Check and perfect documentation for CDR |  | 3d | 2018-05-11 | 2018-05-13 |
| 139 | 8.14 | Fix suggestions from CDR, redo simulations and calculations if needed. |  | 30d | 2018-06-01 | 2018-06-30 |
| 140 | 8.15 | Help in building |  | 62d | 2018-07-01 | 2018-08-31 |
| 141 | 8.16 | **Testing** |  | 31d | 2018-08-01 | 2018-08-31 |
| 142 | 8.16.1 | Thermal test: floating phase |  | 31d | 2018-08-01 | 2018-08-31 |
| 143 | 8.16.2 | Thermal test: temperature decrease while waiting for recovery |  | 31d | 2018-08-01 | 2018-08-31 |
| 144 | 8.16.3 | Thermal test: test insulation for all boxes and validate with simulations |  | 31d | 2018-08-01 | 2018-08-31 |
| 145 | 9 | **Exam Periods** |  | 376d | 2018-01-08 | 2019-01-18 |
| 146 | 9.1 | Exam Period 1 (EX1) |  | 5d | 2018-01-08 | 2018-01-12 |
| 147 | 9.2 | Exam Period 2 (EX2) |  | 10d | 2018-03-12 | 2018-03-21 |
| 148 | 9.3 | Exam Period 3 (EX3) |  | 8d | 2018-05-23 | 2018-05-30 |
| 149 | 9.4 | Exam Period 4 (EX4) |  | 10d | 2018-08-13 | 2018-08-22 |
| 150 | 9.5 | Exam Period 5 (EX5) |  | 10d | 2018-10-15 | 2018-10-24 |
| 151 | 9.6 | Exam Period 6 (EX6) |  | 5d | 2018-12-17 | 2018-12-21 |
| 152 | 9.7 | Exam Period 7 (EX7) |  | 5d | 2019-01-14 | 2019-01-18 |

| ID | WBS | Task | Duration | Start | Finish |
| --- | --- | --- | --- | --- | --- |
| 153 | 10 | **Integration Testing** | 42d | 2018-09-01 | 2018-10-12 |
| 154 | 10.1 | Integration Testing | 40d | 2018-09-01 | 2018-10-10 |
| 155 | 10.2 | Pre-flight testing | 5d | 2018-10-08 | 2018-10-12 |
